# FFA Phase 2 Intelligent Fusion Platform

Schedule from GanttProject, 2016-08-12 to 2016-12-23.
SAP NS2
Project planning for the 2nd phase of development for the Find, Fix, Analyze proof of concept. Also known as the Intelligent Fusion Plaform.

## Calendars

- Project calendar: Mon-Fri working; Sat-Sun off. Exceptions (off unless hours are given): 2016-09-05 (Labor Day), 2016-11-24 (Thanksgiving).

## Resources

| Resource |
| --- |
| Don Howe |
| Michelle Esler |
| Dan Meister |
| David Korn |
| Wayne Waldrup |
| Andy Ellixson |
| Scott Wenzel |

## Schedule

| ID | WBS | Task | Duration | Start | Finish | Complete | Resources |
| --- | --- | --- | --- | --- | --- | --- | --- |
| 1 | 1 | **Migration of Phase 1 to SP12** | 40d | 2016-08-12 | 2016-10-07 | 48% |  |
| 2 | 1.1 | Migrate Phase 1 Apps to SP12 (Leave in current XS Classic) | 1d | 2016-08-12 | 2016-08-12 | 100% | Michelle Esler |
| 3 | 1.2 | **Migrate Apps to XS Advanced** | 40d | 2016-08-12 | 2016-10-07 | 47% |  |
| 4 | 1.2.1 | Migrate Development to XSA Web IDE | 1d | 2016-08-12 | 2016-08-12 | 100% | Michelle Esler |
| 5 | 1.2.2 | **GIT Integration** | 1d | 2016-08-12 | 2016-08-12 | 16% |  |
| 6 | 1.2.2.1 | Standup GIT Server | 1d | 2016-08-12 | 2016-08-12 | 50% | Don Howe |
| 7 | 1.2.2.2 | Integrate GIT Server with XSA Web IDE | 1d | 2016-08-12 | 2016-08-12 |  | Don Howe |
| 8 | 1.2.2.3 | Move all FFA IDF code to GIT | 1d | 2016-08-12 | 2016-08-12 |  | Don Howe; Michelle Esler |
| 9 | 1.2.3 | Graph Search Engine migration to XSA | 1d | 2016-08-12 | 2016-08-12 | 100% | Michelle Esler |
| 10 | 1.2.4 | Smartnav migration to XSA | 1d | 2016-08-12 | 2016-08-12 | 90% | Michelle Esler |
| 11 | 1.2.5 | Graph Admin Tool migration to XSA including replacing GEM calls | 1d | 2016-08-12 | 2016-08-12 | 75% | Don Howe [20%]; Michelle Esler |
| 12 | 1.2.6 | Event to Graph Sync Job | 1d | 2016-09-09 | 2016-09-09 |  | Don Howe; Michelle Esler |
| 13 | 1.2.7 | SDS Doc Merge Job (Move from BS_API package to FFA) and use FFA schema for tables | 1d | 2016-08-12 | 2016-08-12 |  | Don Howe; Michelle Esler |
| 14 | 1.2.8 | For all UIs make SAPUI5 local instead of remote CDN | 1d | 2016-10-07 | 2016-10-07 |  | Michelle Esler |
| 15 | 2 | **Functional Enhancements** | 94d | 2016-08-12 | 2016-12-23 | 6% |  |
| 16 | 2.1 | **Enhance FFA IDF Ontology/Graph - copy to FF_IDF_VERTEX/EDGE tables** | 20d | 2016-08-12 | 2016-09-09 | 66% |  |
| 17 | 2.1.1 | add observable events to ontology | 1d | 2016-09-09 | 2016-09-09 |  | Don Howe |
| 18 | 2.1.2 | modify document ontology property names for documents to be generic instead of BabelStreet centric | 1d | 2016-08-12 | 2016-08-12 | 100% | Dan Meister |
| 19 | 2.1.3 | Change graph structure for edges to use vertex ENTITYID for source and target instead of URI | 1d | 2016-08-12 | 2016-08-12 | 100% | Dan Meister |
| 20 | 2.1.4 | Modify Graph->Lumify sync stored procs for ontology changes and structure changes | 1d | 2016-08-12 | 2016-08-12 | 100% | Dan Meister |
| 21 | 2.1.5 | Modify Graph Curation tables contents to support ontology changes | 1d | 2016-09-09 | 2016-09-09 | 100% | Don Howe; Dan Meister |
| 22 | 2.1.6 | Modify Graph Search App to support graph structure changes for edge source/target | 1d | 2016-08-12 | 2016-08-12 |  | Michelle Esler |
| 23 | 2.2 | **Graph Search UI** | 21d | 2016-09-09 | 2016-10-07 |  |  |
| 24 | 2.2.1 | Modify display of multiple events/documents on map | 1d | 2016-09-09 | 2016-09-09 |  | Michelle Esler |
| 25 | 2.2.2 | Link Document to Smart Nav app | 1d | 2016-09-09 | 2016-09-09 |  | Michelle Esler |
| 26 | 2.2.3 | Add range selector to temporal Graph and dont change temporal when other filtered data changes | 1d | 2016-09-09 | 2016-09-09 |  | Michelle Esler |
| 27 | 2.2.4 | Add Abilty to translate doc on fly when displayed | 1d | 2016-09-09 | 2016-09-09 |  | Michelle Esler |

Notes:
- 13: Needs to be implemented in XSA Engine. / Use FFA.DOCUMENTS for target table instead of SDS_DATA.BS_GRAPHS.

| ID | WBS | Task | Duration | Start | Finish | Complete | Resources |
| --- | --- | --- | --- | --- | --- | --- | --- |
| 28 | 2.2.5 | **Incorporate HANA graph algorithms info Graph Search Engine** | 1d | 2016-10-07 | 2016-10-07 |  |  |
| 29 | 2.2.5.1 | Graph Pattern Matching | 1d | 2016-10-07 | 2016-10-07 |  | Don Howe; Michelle Esler |
| 30 | 2.2.5.2 | Shortest Path | 1d | 2016-10-07 | 2016-10-07 |  | Don Howe; Michelle Esler |
| 31 | 2.2.5.3 | Neighborhood Search | 1d | 2016-10-07 | 2016-10-07 |  | Don Howe; Michelle Esler |
| 32 | 2.2.5.4 | Clustering | 1d | 2016-10-07 | 2016-10-07 |  | Don Howe; Michelle Esler |
| 33 | 2.3 | **Smart Nav UI** | 40d | 2016-08-12 | 2016-10-07 | 5% | Michelle Esler |
| 34 | 2.3.1 | Complete Map widget development for the Smart Nav App | 1d | 2016-09-09 | 2016-09-09 |  | Michelle Esler |
| 35 | 2.3.2 | Add PDF Viewer to the Smart Nav App | 1d | 2016-10-07 | 2016-10-07 |  | Michelle Esler |
| 36 | 2.3.3 | Add ability to convert non-text (PDF, Word) docs to text form. | 1d | 2016-10-07 | 2016-10-07 |  | Michelle Esler |
| 37 | 2.3.4 | Add ability to upload documents without event to the Smart Nav App | 1d | 2016-09-09 | 2016-09-09 |  | Michelle Esler |
| 38 | 2.3.5 | Add Google Translate capability to the Smart Nav App | 1d | 2016-08-12 | 2016-08-12 | 50% | Michelle Esler |
| 39 | 2.3.6 | Add ability to add translated doc to repository | 1d | 2016-09-09 | 2016-09-09 |  | Don Howe; Michelle Esler |
| 40 | 2.3.7 | When showing a doc, if there is also a translated version. Show that also. | 1d | 2016-09-09 | 2016-09-09 |  | Michelle Esler |
| 41 | 2.3.8 | Add ability to only show domain specific docs, Give user domain choice up top | 1d | 2016-10-07 | 2016-10-07 |  | Don Howe; Michelle Esler |
| 42 | 2.3.9 | Resolve failed calls for text mining of recommended docs | 1d | 2016-09-09 | 2016-09-09 |  | Michelle Esler; Dan Meister |
| 43 | 2.3.10 | Use new DOCUMENT table instead of SDS_DATA.BS_GRAPHS where referenced | 1d | 2016-08-12 | 2016-08-12 |  | Michelle Esler |
| 44 | 2.4 | **Graph Admin Web UI** | 21d | 2016-09-09 | 2016-10-07 |  | Michelle Esler |
| 45 | 2.4.1 | Replace existing graph visualization with Viva Graph | 1d | 2016-09-09 | 2016-09-09 |  | Michelle Esler |
| 46 | 2.4.2 | Modify graph search config screens to reflect latest code changes | 1d | 2016-10-07 | 2016-10-07 |  | Michelle Esler |
| 47 | 2.4.3 | Modify graph search app config screens to be more intuitive (not like a setup widget) | 1d | 2016-10-07 | 2016-10-07 |  | Michelle Esler |
| 48 | 2.5 | **Lumify Beta Release Integration** | 40d | 2016-08-12 | 2016-10-07 |  |  |
| 49 | 2.5.1 | Update Lumify Schema | 1d | 2016-08-12 | 2016-08-12 |  | Dan Meister |
| 50 | 2.5.2 | Refactor sync triggers and FFA IDF sync stored procedures | 1d | 2016-08-12 | 2016-08-12 |  | Dan Meister |
| 51 | 2.5.3 | Install new lumify app in COIL | 1d | 2016-08-12 | 2016-08-12 |  | Don Howe; Dan Meister |
| 52 | 2.5.4 | Create new lumify demo scenario | 1d | 2016-10-07 | 2016-10-07 |  | David Korn |
| 53 | 2.5.5 | modify graph to support SYSUUID for ENTITYID | 1d | 2016-08-12 | 2016-08-12 |  | Dan Meister |

Notes:
- 42: Have Dan Meister look at issues with failed calls. Also seem to have a permissions problem executing in XSA.

| ID | WBS | Task | Duration | Start | Finish | Complete | Resources |
| --- | --- | --- | --- | --- | --- | --- | --- |
| 54 | 2.5.6 | **Resolve dead-lock issue in Graph to Lumify sync job** | 20d | 2016-08-12 | 2016-09-09 |  | Don Howe; Dan Meister |
| 55 | 2.5.6.1 | Modify sunc proc so that it limits number of entries it processes per invocation | 1d | 2016-08-12 | 2016-08-12 |  | Don Howe; Dan Meister |
| 56 | 2.5.6.2 | Refactor ADD_EVENT_TO_GRAPH to write to FFA IDF graph instead of Lumify graph | 1d | 2016-09-09 | 2016-09-09 |  | Dan Meister |
| 57 | 2.5.6.3 | Refactor ADD_DOCUMENT_TO_GRAPH to write to FFA IDF graph instead of Lumify | 1d | 2016-09-09 | 2016-09-09 |  | Dan Meister |
| 58 | 2.6 | **AxonAI** | 1d | 2016-08-12 | 2016-08-12 | 66% |  |
| 59 | 2.6.1 | swarm poly agent model as stored procs | 1d | 2016-08-12 | 2016-08-12 | 100% |  |
| 60 | 2.6.2 | GUI driven model simulation | 1d | 2016-08-12 | 2016-08-12 | 100% |  |
| 61 | 2.6.3 | Install and test latest version | 1d | 2016-08-12 | 2016-08-12 |  | Don Howe |
| 62 | 2.7 | **Enhance Text Analytics/Mining configurations to support new use case** | 38d | 2016-09-09 | 2016-11-01 |  |  |
| 63 | 2.7.1 | dictionary enhancements | 1d | 2016-11-01 | 2016-11-01 |  | Dan Meister |
| 64 | 2.7.2 | rule enhancements | 1d | 2016-11-01 | 2016-11-01 |  | Dan Meister |
| 65 | 2.7.3 | Update PUBLIC_SECTOR TA rules based upon latest HANA 12 update of rules | 1d | 2016-09-09 | 2016-09-09 |  | Dan Meister |
| 66 | 2.8 | **TA Graph Daemon** | 75d | 2016-09-09 | 2016-12-23 |  |  |
| 67 | 2.8.1 | support new graph structure for edge source/target | 1d | 2016-09-09 | 2016-09-09 |  | Don Howe |
| 68 | 2.8.2 | ad ability to populate either our graph structure or Lumify | 1d | 2016-12-23 | 2016-12-23 |  |  |
| 69 | 2.8.3 | add inference engine capability to extract observables | 1d | 2016-12-23 | 2016-12-23 |  |  |
| 70 | 2.8.4 | make existing vertex searches case insensitive | 1d | 2016-09-09 | 2016-09-09 |  | Don Howe |
| 71 | 2.8.5 | use table based dictionaries to reconcile different spellings/aliases for graph objects | 1d | 2016-12-23 | 2016-12-23 |  |  |
| 72 | 2.9 | Merge SDS_DATA schema objects into the FFA Schema | 1d | 2016-08-12 | 2016-08-12 | 100% | Dan Meister |
| 73 | 2.10 | make DOCUMENT and EVENT tables views into the GRAPH vertex table | 1d | 2016-09-09 | 2016-09-09 |  | Don Howe |
| 74 | 2.11 | Additional OSINT Feed (i.e. Geofeedia) into SDS | 1d | 2016-12-23 | 2016-12-23 |  |  |
| 75 | 3 | **FMV/Image Entity Extraction** | 40d | 2016-08-12 | 2016-10-07 | 14% |  |
| 76 | 3.1 | Aquire 1U server for I-Abra Video Engine | 1d | 2016-09-09 | 2016-09-09 |  | David Korn |
| 77 | 3.2 | Aquire test FMV and image data set | 1d | 2016-08-12 | 2016-08-12 | 100% | Don Howe |
| 78 | 3.3 | Install I-Abra neural training environment on 1U server | 1d | 2016-09-09 | 2016-09-09 |  | Don Howe |
| 79 | 3.4 | Design/Create HANA schema supporting Observable Events extracted from I-Abra JSON | 1d | 2016-09-09 | 2016-09-09 |  | Don Howe; Dan Meister |
| 80 | 3.5 | Design/Develop I-Abra JSON streaming output data (Observable Events) to HANA SDS | 1d | 2016-09-09 | 2016-09-09 |  | Don Howe; Dan Meister; Wayne Waldrup |
| 81 | 3.6 | Develop use case for integration of Observable Events into FFA IDF | 1d | 2016-10-07 | 2016-10-07 |  | Don Howe; David Korn |
| 82 | 3.7 | Enhance FFA IDF solution to incorporate Observable Events (Graph Search App?) | 1d | 2016-10-07 | 2016-10-07 |  | Don Howe; Michelle Esler |

Notes:
- 56: Rename existing ADD_EVENT_TO_GRAPH to ADD_EVENT_TO_LUMIFY_GRAPH. / Create a new proc call ADD_EVENT_TO_FFA_GRAPH.

| ID | WBS | Task | Duration | Start | Finish | Complete | Resources |
| --- | --- | --- | --- | --- | --- | --- | --- |
| 83 | 4 | **Ruggedized Platform** | 18d | 2016-11-30 | 2016-12-23 |  |  |
| 84 | 4.1 | Configure switch such that hosts & VMs have permanent static IPs | 1d | 2016-11-30 | 2016-11-30 |  | Don Howe; David Korn |
| 85 | 4.2 | **Implement 1U tactical server as an OpenStack env for non-HANA apps to operate as a VM** | 18d | 2016-11-30 | 2016-12-23 |  |  |
| 86 | 4.2.1 | Add Lumify Beta VM | 1d | 2016-11-30 | 2016-11-30 |  | Don Howe; Dan Meister |
| 87 | 4.2.2 | Add standalone map server such as Mapbox | 1d | 2016-11-30 | 2016-11-30 |  | Don Howe; Dan Meister |
| 88 | 4.2.3 | Add Metacarta VM | 1d | 2016-11-30 | 2016-11-30 |  | Don Howe; Dan Meister |
| 89 | 4.2.4 | Add Language Translation Software VM (optional) | 1d | 2016-12-23 | 2016-12-23 |  | Don Howe; Dan Meister |
| 90 | 4.3 | Configure CISCO Ruggedized platform with existing FFA demo configuration | 1d | 2016-11-30 | 2016-11-30 |  | Don Howe; Dan Meister |
| 91 | 5 | **Integration with External Systems** | 94d | 2016-08-12 | 2016-12-23 | 16% |  |
| 92 | 5.1 | **Mapbox Integration** | 94d | 2016-08-12 | 2016-12-23 | 20% |  |
| 93 | 5.1.1 | Install and Configure Mapbox in the COIL | 1d | 2016-08-12 | 2016-08-12 | 100% | Don Howe |
| 94 | 5.1.2 | Integrate Graph Search Engine with Mapbox | 1d | 2016-08-12 | 2016-08-12 |  | Michelle Esler |
| 95 | 5.1.3 | Integrate the SmartNav Engine with Mapbox | 1d | 2016-09-09 | 2016-09-09 |  | Michelle Esler |
| 96 | 5.1.4 | Integrate AxonAI with Mapbox | 1d | 2016-12-23 | 2016-12-23 |  |  |
| 97 | 5.1.5 | Integrate Lumify with Mapbox | 1d | 2016-12-23 | 2016-12-23 |  |  |
| 98 | 5.2 | **Graph Import/Export with Palantir** | 20d | 2016-08-12 | 2016-09-09 |  |  |
| 99 | 5.2.1 | **Import Graph from Palantir** | 20d | 2016-08-12 | 2016-09-09 |  |  |
| 100 | 5.2.1.1 | Whitepaper describing process for import Palantir Ontology/Graph Data into HANA Graph | 1d | 2016-08-12 | 2016-08-12 |  | Dan Meister; Andy Ellixson |
| 101 | 5.2.1.2 | Create and configure a oracle palantir data vm in the COIL with the Palantir Data | 1d | 2016-08-12 | 2016-08-12 |  | Andy Ellixson |
| 102 | 5.2.1.3 | Configure smart data access to Oracle server on VM | 1d | 2016-08-12 | 2016-08-12 |  | Dan Meister; Andy Ellixson |
| 103 | 5.2.1.4 | Import Ontology from Palantir to HANA Graph | 1d | 2016-08-12 | 2016-08-12 |  | Dan Meister; Andy Ellixson |
| 104 | 5.2.1.5 | Import Graph Data from Palantir to HANA Graph | 1d | 2016-09-09 | 2016-09-09 |  | Dan Meister; Andy Ellixson |
| 105 | 5.2.2 | Export Graph to Palantir | 1d | 2016-09-09 | 2016-09-09 |  | Dan Meister; Andy Ellixson |
| 106 | 5.3 | **Graph Import/Export with Analyst Notebook** | 1d | 2016-12-23 | 2016-12-23 |  |  |
| 107 | 5.3.1 | Import Graph from Analyst Notebook | 1d | 2016-12-23 | 2016-12-23 |  |  |
| 108 | 5.3.2 | Export Graph to Analyst Notebook | 1d | 2016-12-23 | 2016-12-23 |  |  |

| ID | WBS | Task | Duration | Start | Finish | Resources |
| --- | --- | --- | --- | --- | --- | --- |
| 109 | 5.4 | **Raptor X Integration** | 1d | 2016-12-23 | 2016-12-23 |  |
| 110 | 5.4.1 | Install Raptor-X instance in our environment | 1d | 2016-12-23 | 2016-12-23 |  |
| 111 | 5.4.2 | Learn how to develop plugins for Raptor-X | 1d | 2016-12-23 | 2016-12-23 |  |
| 112 | 5.4.3 | Develop Use Case for FFA IDF on Raptor-X | 1d | 2016-12-23 | 2016-12-23 |  |
| 113 | 5.4.4 | Design Plugin for Raptor-X based upon use case | 1d | 2016-12-23 | 2016-12-23 |  |
| 114 | 5.4.5 | Develop Raptor-X Plugin | 1d | 2016-12-23 | 2016-12-23 |  |
| 115 | 5.5 | **Local Translation Engine Integration** | 1d | 2016-12-23 | 2016-12-23 |  |
| 116 | 5.5.1 | Indentify and acquire local translation engine | 1d | 2016-12-23 | 2016-12-23 | David Korn |
| 117 | 5.5.2 | Install and Configure a local Translation Engine in the COIL | 1d | 2016-12-23 | 2016-12-23 | Don Howe |
| 118 | 5.5.3 | Integrate Smart Nav Engine with Local Translate Engine | 1d | 2016-12-23 | 2016-12-23 | Michelle Esler |
| 119 | 5.5.4 | Integrate Graph Search Engine with Local Translate Engine | 1d | 2016-12-23 | 2016-12-23 | Michelle Esler |
| 120 | 6 | **Cloud Implementation** | 55d | 2016-10-07 | 2016-12-23 |  |
| 121 | 6.1 | Create Data Services workflows to ingest events and documents from external systems | 1d | 2016-10-07 | 2016-10-07 | Scott Wenzel |
| 122 | 6.2 | **Event Ingest** | 1d | 2016-10-07 | 2016-10-07 |  |
| 123 | 6.2.1 | Web UI Interface for Event Ingest | 1d | 2016-10-07 | 2016-10-07 | Michelle Esler |
| 124 | 6.2.2 | REST Service to load CSV event file | 1d | 2016-10-07 | 2016-10-07 | Michelle Esler |
| 125 | 6.3 | **Document Ingest** | 1d | 2016-10-07 | 2016-10-07 |  |
| 126 | 6.3.1 | Web UI for Document Ingest | 1d | 2016-10-07 | 2016-10-07 | Michelle Esler |
| 127 | 6.3.2 | REST Service to load documents | 1d | 2016-10-07 | 2016-10-07 | Michelle Esler |
| 128 | 6.4 | Develop Fiori like Launchpad for Ingest of Events and Documents | 1d | 2016-10-07 | 2016-10-07 | Michelle Esler |
| 129 | 6.5 | Publish HANA FFA IDF Services to be used by customers to develop their own app | 1d | 2016-10-31 | 2016-10-31 | Don Howe; Michelle Esler; Dan Meister |
| 130 | 6.6 | Develop HANA FFA IDF operation and sustainment procedures | 1d | 2016-10-31 | 2016-10-31 | Don Howe; Michelle Esler; Dan Meister |
| 131 | 6.7 | Install/Configure HANA FFA IDF on AWS | 1d | 2016-10-31 | 2016-10-31 | Don Howe; Dan Meister |
| 132 | 6.8 | Install/Configure HANA FFA IDF on Virtustream | 1d | 2016-12-23 | 2016-12-23 |  |

| ID | WBS | Task | Type | Duration | Start | Finish | Resources |
| --- | --- | --- | --- | --- | --- | --- | --- |
| 133 | 7 | **Enablement Collatoral** |  | 1d | 2016-10-31 | 2016-10-31 |  |
| 134 | 7.1 | develop customer POC CONOPS |  | 1d | 2016-10-31 | 2016-10-31 | Don Howe; Michelle Esler; Dan Meister; David Korn |
| 135 | 7.2 | create demo test data set |  | 1d | 2016-10-31 | 2016-10-31 | Don Howe; Dan Meister |
| 136 | 7.3 | develop user tutorial for customer POCs |  | 1d | 2016-10-31 | 2016-10-31 | Don Howe; Michelle Esler; Dan Meister; David Korn |
| 137 | 7.4 | Develop use case for briefing and demonstration purposes |  | 1d | 2016-10-31 | 2016-10-31 | David Korn |
| 138 | 8 | **Milestones** |  | 94d | 2016-08-12 | 2016-12-23 |  |
| 139 | 8.1 | Sprint 1 Dev | milestone | 0d | 2016-08-12 | 2016-08-12 |  |
| 140 | 8.2 | Sprint 2 Dev | milestone | 0d | 2016-09-09 | 2016-09-09 |  |
| 141 | 8.3 | Sprint 3 Dev | milestone | 0d | 2016-10-07 | 2016-10-07 |  |
| 142 | 8.4 | Sprint 4 (Test/Deploy) | milestone | 0d | 2016-10-31 | 2016-10-31 |  |
| 143 | 8.5 | Sprint 5 Dev |  | 1d | 2016-12-23 | 2016-12-23 |  |
